# 软件开发

Schedule from MS Project, 2021-03-10 to 2021-07-01.

## Calendars

- 标准: Mon-Fri 08:00-12:00, 13:00-17:00; Sat-Sun off.

## Resources

| Resource |
| --- |
| 管理人员 |
| 项目经理 |
| 分析人员 |
| 开发人员 |
| 测试人员 |
| 讲师 |
| 技术联络人员 |
| 部署小组 |

## Schedule

| ID | WBS | Task | Type | Duration | Start | Finish | Predecessors | Total slack | Free slack | Resources | Work |
| --- | --- | --- | --- | --- | --- | --- | --- | --- | --- | --- | --- |
| 1 | 1 | **项目范围规划** |  | 5d | 2021-03-10 | 2021-03-16 |  | 8d |  |  | 40h |
| 2 | 1.1 | 对接项目，确定项目范围 |  | 1d | 2021-03-10 | 2021-03-10 |  | 8d | 0d | 管理人员 | 8h |
| 3 | 1.2 | 获得项目所需资金 |  | 2d | 2021-03-11 | 2021-03-12 | 2 | 8d | 0d | 管理人员 | 16h |
| 4 | 1.3 | 定义预备资源 |  | 1d | 2021-03-15 | 2021-03-15 | 3 | 8d | 0d | 项目经理 | 8h |
| 5 | 1.4 | 获得核心资源 |  | 1d | 2021-03-16 | 2021-03-16 | 4 | 8d | 0d | 项目经理 | 8h |
| 6 | 1.5 | 完成项目范围规划 | milestone | 0d | 2021-03-16 | 2021-03-16 | 5 | 6d | 0d |  |  |
| 7 | 2 | **分析/软件需求** |  | 10d | 2021-03-17 | 2021-03-30 |  | 8d |  |  | 80h |
| 8 | 2.1 | 行为需求分析 |  | 5d | 2021-03-17 | 2021-03-23 | 6 | 8d | 0d | 分析人员 | 40h |
| 9 | 2.2 | 起草项目初步软件需求规格说明书 |  | 4d | 2021-03-24 | 2021-03-29 | 8 | 8d | 0d | 分析人员 | 32h |
| 10 | 2.3 | 获得所需资源 |  | 1d | 2021-03-30 | 2021-03-30 | 9 | 8d | 0d | 项目经理 | 8h |
| 11 | 2.4 | 完成分析工作 | milestone | 0d | 2021-03-30 | 2021-03-30 | 10 | 6d | 0d |  |  |
| 12 | 3 | **设计** |  | 11.5d | 2021-03-31 | 2021-04-15 |  | 8d |  |  | 96h |
| 13 | 3.1 | 审阅初步的软件规范 |  | 2d | 2021-03-31 | 2021-04-01 | 11 | 8d | 0d | 分析人员 | 16h |
| 14 | 3.2 | 制定功能规范 |  | 5d | 2021-04-02 | 2021-04-08 | 13 | 8d | 0d | 分析人员 | 40h |
| 15 | 3.3 | 根据功能规范开发原型 |  | 4d | 2021-04-09 | 2021-04-14 | 14 | 8d | 0d | 分析人员 | 32h |
| 16 | 3.4 | 获得开展后续工作的批准 |  | 4h | 2021-04-15 | 2021-04-15 | 15 | 8d | 0d | 管理人员; 项目经理 | 8h |
| 17 | 3.5 | 完成设计工作 | milestone | 0d | 2021-04-15 | 2021-04-15 | 16 | 6d | 0d |  |  |
| 18 | 4 | **开发** |  | 33d | 2021-04-15 | 2021-06-01 |  | 8d |  |  | 384h |
| 19 | 4.1 | 审阅功能规范 |  | 1d | 2021-04-15 | 2021-04-16 | 17 | 8d | 0d | 开发人员 | 8h |
| 20 | 4.2 | 确定模块化/分层设计参数 |  | 1d | 2021-04-16 | 2021-04-19 | 19 | 8d | 0d | 开发人员 | 8h |
| 21 | 4.3 | 分派任务给开发人员 |  | 1d | 2021-04-19 | 2021-04-20 | 20 | 8d | 0d | 开发人员 | 8h |
| 22 | 4.4 | 编写代码 |  | 30d | 2021-04-20 | 2021-06-01 | 21 | 8d | 0d | 开发人员 | 240h |
| 23 | 4.5 | 开发人员测试(初步调试) |  | 15d | 2021-04-30 | 2021-05-20 | 22FS-7.5% | 8d | 0d | 开发人员 | 120h |
| 24 | 4.6 | 完成开发工作 | milestone | 0d | 2021-05-20 | 2021-05-20 | 23 | 6d | 0d |  |  |

| ID | WBS | Task | Type | Duration | Start | Finish | Predecessors | Total slack | Free slack | Resources | Work |
| --- | --- | --- | --- | --- | --- | --- | --- | --- | --- | --- | --- |
| 25 | 5 | **测试** |  | 40.5d | 2021-04-15 | 2021-06-10 |  | 15d |  |  | 184h |
| 26 | 5.1 | 根据产品规范制定单元测试计划 |  | 4d | 2021-04-15 | 2021-04-21 | 17 | 51.5d |  | 测试人员 | 32h |
| 27 | 5.2 | 根据产品规范制定整体测试计划 |  | 4d | 2021-04-15 | 2021-04-21 | 17 | 51.5d |  | 测试人员 | 32h |
| 28 | 5.3 | **单元测试** |  | 10d | 2021-05-21 | 2021-06-03 |  | 8d |  |  | 80h |
| 29 | 5.3.1 | 测试组件模块是否符合产品规范 |  | 2d | 2021-05-21 | 2021-05-24 | 24 | 8d | 0d | 测试人员 | 16h |
| 30 | 5.3.2 | 找出不符合产品规范的异常情况 |  | 3d | 2021-05-25 | 2021-05-27 | 29 | 8d | 0d | 测试人员 | 24h |
| 31 | 5.3.3 | 修改代码 |  | 3d | 2021-05-28 | 2021-06-01 | 30 | 8d | 0d | 测试人员 | 24h |
| 32 | 5.3.4 | 重新测试经过修改的代码 |  | 2d | 2021-06-02 | 2021-06-03 | 31 | 8d | 0d | 测试人员 | 16h |
| 33 | 5.3.5 | 完成单元测试 | milestone | 0d | 2021-06-03 | 2021-06-03 | 32 | 6d | 0d |  |  |
| 34 | 5.4 | **整体测试** |  | 5d | 2021-06-04 | 2021-06-10 |  | 8d |  |  | 40h |
| 35 | 5.4.1 | 测试模块集成情况 |  | 5d | 2021-06-04 | 2021-06-10 | 33 | 8d | 0d | 测试人员 | 40h |
| 36 | 5.4.2 | 完成整体测试 | milestone | 0d | 2021-06-10 | 2021-06-10 | 35 | 6d | 0d |  |  |
| 37 | 6 | **培训** |  | 30.5d | 2021-04-15 | 2021-05-27 |  | 18d |  |  | 104h |
| 38 | 6.1 | 制定针对最终用户的培训规范 |  | 3d | 2021-04-15 | 2021-04-20 | 17 | 40.5d | 22.5d | 讲师 | 24h |
| 39 | 6.2 | 制定针对产品技术支持人员的培训规范 |  | 3d | 2021-04-15 | 2021-04-20 | 17 | 40.5d | 22.5d | 讲师 | 24h |
| 40 | 6.3 | 确定培训方法(基于计算机的培训、教室授课等) |  | 2d | 2021-04-15 | 2021-04-19 | 17 | 41.5d | 23.5d | 讲师 | 16h |
| 41 | 6.4 | 编写培训材料 |  | 1w | 2021-05-21 | 2021-05-27 | 38, 24, 39, 40 | 18d | 0d | 讲师 | 40h |
| 42 | 6.5 | 完成培训材料 | milestone | 0d | 2021-05-27 | 2021-05-27 | 41 | 16d | 10d |  |  |
| 43 | 7 | **文档** |  | 38d | 2021-04-15 | 2021-06-08 |  | 10.5d |  |  | 336h |
| 44 | 7.1 | 制定“帮助”规范 |  | 1d | 2021-04-15 | 2021-04-16 | 17 | 27.5d | 17d | 技术联络人员 | 8h |
| 45 | 7.2 | 开发“帮助”系统 |  | 3w | 2021-05-11 | 2021-06-01 | 44, 22FS-5% | 10.5d | 0d | 技术联络人员 | 120h |
| 46 | 7.3 | 审阅“帮助”文档 |  | 3d | 2021-06-01 | 2021-06-04 | 45 | 10.5d | 0d | 技术联络人员 | 24h |
| 47 | 7.4 | 根据反馈修改“帮助”文档 |  | 2d | 2021-06-04 | 2021-06-08 | 46 | 10.5d | 0d | 技术联络人员 | 16h |
| 48 | 7.5 | 制定用户手册规范 |  | 2d | 2021-04-15 | 2021-04-19 | 17 | 27.5d | 16d | 技术联络人员 | 16h |
| 49 | 7.6 | 编写用户手册 |  | 3w | 2021-05-11 | 2021-06-01 | 48, 22FS-5% | 11.5d | 0d | 技术联络人员 | 120h |
| 50 | 7.7 | 审阅所有的用户文档 |  | 2d | 2021-06-01 | 2021-06-03 | 49 | 11.5d | 0d | 技术联络人员 | 16h |
| 51 | 7.8 | 根据反馈修改用户文档 |  | 2d | 2021-06-03 | 2021-06-07 | 50 | 11.5d | 1d | 技术联络人员 | 16h |
| 52 | 7.9 | 完成文档 | milestone | 0d | 2021-06-08 | 2021-06-08 | 51, 47 | 10.5d | 8.5d |  |  |

| ID | WBS | Task | Type | Duration | Start | Finish | Predecessors | Total slack | Free slack | Constraint | Resources | Work |
| --- | --- | --- | --- | --- | --- | --- | --- | --- | --- | --- | --- | --- |
| 53 | 8 | **试生产** |  | 9d | 2021-06-09 | 2021-06-21 |  | 8d |  |  |  | 64h |
| 54 | 8.1 | 确定测试群体 |  | 1d | 2021-06-09 | 2021-06-09 |  | 8d | 0d | start no earlier than 2021-06-09 | 项目经理 | 8h |
| 55 | 8.2 | 确定软件分发机制 |  | 1d | 2021-06-10 | 2021-06-10 | 54 | 8d | 0d |  |  |  |
| 56 | 8.3 | 安装/部署软件 |  | 1d | 2021-06-11 | 2021-06-11 | 55 | 8d | 0d |  | 部署小组 | 8h |
| 57 | 8.4 | 获得用户反馈 |  | 1w | 2021-06-14 | 2021-06-18 | 56 | 8d | 0d |  | 部署小组 | 40h |
| 58 | 8.5 | 评估测试信息 |  | 1d | 2021-06-21 | 2021-06-21 | 57 | 8d | 0d |  | 部署小组 | 8h |
| 59 | 8.6 | 完成试生产工作 | milestone | 0d | 2021-06-21 | 2021-06-21 | 58 | 8d |  |  |  |  |
| 60 | 9 | **投入生产** |  | 65d | 2021-03-31 | 2021-06-29 |  | 2d |  |  |  | 64h |
| 61 | 9.1 | 确定测试群体 |  | 1d | 2021-03-31 | 2021-03-31 | 11 | 58d | 0d |  | 项目经理 | 8h |
| 62 | 9.2 | 确定软件分发机制 |  | 1d | 2021-04-01 | 2021-04-01 | 61 | 58d | 56d |  |  |  |
| 63 | 9.3 | 安装/部署软件 |  | 1d | 2021-06-21 | 2021-06-21 | 36, 62, 52, 42 | 2d | 0d | start no earlier than 2021-06-21 | 部署小组 | 8h |
| 64 | 9.4 | 获得用户反馈 |  | 1w | 2021-06-22 | 2021-06-28 | 63 | 2d | 0d |  | 部署小组 | 40h |
| 65 | 9.5 | 评估测试信息 |  | 1d | 2021-06-29 | 2021-06-29 | 64 | 2d | 0d |  | 部署小组 | 8h |
| 66 | 9.6 | 完成试生产工作 | milestone | 0d | 2021-06-29 | 2021-06-29 | 65 | 2d |  |  |  |  |
| 67 | 10 | **实施工作结束后的回顾** |  | 3d | 2021-06-29 | 2021-07-01 |  | 0d |  |  |  | 24h |
| 68 | 10.1 | 将经验教训记录存档 |  | 1d | 2021-06-29 | 2021-06-29 |  | 0d |  | start no earlier than 2021-06-29 | 项目经理 | 8h |
| 69 | 10.2 | 分发给工作组成员 |  | 1d | 2021-06-30 | 2021-06-30 | 68 | 0d |  |  | 项目经理 | 8h |
| 70 | 10.3 | 建立软件维护小组 |  | 1d | 2021-07-01 | 2021-07-01 | 69 | 0d |  |  | 项目经理 | 8h |
| 71 | 10.4 | 完成回顾 | milestone | 0d | 2021-07-01 | 2021-07-01 | 70 | 0d |  |  |  |  |
| 72 | 11 | 软件开发模板结束 | milestone | 0d | 2021-07-01 | 2021-07-01 | 71 | 0d |  |  |  |  |
